# 草海典型性水域水生态保护与修复工程(施工总进度计划)

Schedule from a web Gantt chart, 2023-11-13 to 2025-01-04.
Every day is a working day

## Schedule

| ID | WBS | Task | Duration | Start | Finish | Predecessors | Status |
| --- | --- | --- | --- | --- | --- | --- | --- |
| 2 | 1 | **施工准备（已获得省林业局审批）** | 40d | 2023-11-13 | 2023-12-22 |  |  |
| 3 | 1.1 | 临时用地申请手续 | 40d | 2023-11-13 | 2023-12-22 |  | waiting |
| 4 | 1.2 | 人员、材料准备 | 7d | 2023-11-13 | 2023-11-19 |  |  |
| 5 | 2 | **一、退耕还湖湿地** | 240d | 2023-11-20 | 2024-07-16 |  |  |
| 6 | 2.1 | **生态围隔布设工程** | 20d | 2023-11-20 | 2023-12-09 |  |  |
| 7 | 2.1.1 | 拦鱼网布设 | 20d | 2023-11-20 | 2023-12-09 | 4 | waiting |
| 8 | 2.2 | **水生植物恢复工程** | 200d | 2023-12-20 | 2024-07-06 |  |  |
| 9 | 2.2.1 | 沉水植物种植及补种 | 200d | 2023-12-20 | 2024-07-06 | 7, 11 | waiting |
| 10 | 2.3 | **鱼类种群调控工程** | 220d | 2023-12-10 | 2024-07-16 |  |  |
| 11 | 2.3.1 | 清除鱼类 | 10d | 2023-12-10 | 2023-12-19 | 7 | waiting |
| 12 | 2.3.2 | 鱼类投放 | 10d | 2024-07-07 | 2024-07-16 | 9 | waiting |
| 13 | 3 | **二、入湖河口湿地** | 392d | 2023-12-10 | 2025-01-04 |  |  |
| 14 | 3.1 | **临时场地场地建设** | 79d | 2023-12-23 | 2024-03-10 |  |  |
| 15 | 3.1.1 | 临时场地基础建设 | 50d | 2023-12-23 | 2024-02-10 | 3 | waiting |
| 16 | 3.1.2 | 临时场地设备进场及安装 | 20d | 2024-02-20 | 2024-03-10 |  |  |
| 17 | 3.2 | **生态围隔布设工程** | 50d | 2023-12-10 | 2024-01-28 |  |  |
| 18 | 3.2.1 | 拦鱼网布设 | 20d | 2023-12-10 | 2023-12-29 | 7 | waiting |
| 19 | 3.2.2 | 软围隔布设 | 30d | 2023-12-30 | 2024-01-28 | 18 | waiting |
| 20 | 3.3 | **鱼类种群调控工程** | 342d | 2024-01-29 | 2025-01-04 |  |  |
| 21 | 3.3.1 | 清除鱼类 | 30d | 2024-01-29 | 2024-02-27 | 19 | waiting |
| 22 | 3.3.2 | 鱼类投放（局部调控） | 10d | 2024-12-26 | 2025-01-04 | 31 | waiting |
| 23 | 3.4 | **表层浮泥清除** | 261d | 2024-03-11 | 2024-11-26 |  |  |
| 24 | 3.4.1 | 表层浮泥清除第一期 | 40d | 2024-03-11 | 2024-04-19 | 16 | waiting |
| 25 | 3.4.2 | 六个月观察期 | 180d | 2024-04-20 | 2024-10-16 | 24 | waiting |
| 26 | 3.4.3 | 表层浮泥清除第二期 | 40d | 2024-10-17 | 2024-11-25 | 25 | waiting |
| 27 | 3.4.4 | 六个月观察期 | 1d | 2024-11-26 | 2024-11-26 | 26 | waiting |
| 28 | 3.4.5 | 表层浮泥清除第三期 | 1d | 2024-11-26 | 2024-11-26 |  |  |

| ID | WBS | Task | Duration | Start | Finish | Predecessors | Status |
| --- | --- | --- | --- | --- | --- | --- | --- |
| 29 | 3.5 | **水生植物恢复工程** | 250d | 2024-04-20 | 2024-12-25 |  |  |
| 30 | 3.5.1 | 沉水植物种植及补种第一期（约8.67万平方） | 60d | 2024-04-20 | 2024-06-18 | 24 | waiting |
| 31 | 3.5.2 | 沉水植物种植及补种第二期（约3.3万平方） | 30d | 2024-11-26 | 2024-12-25 | 26 | waiting |
| 32 | 4 | **三、敞水区** | 130d | 2024-05-01 | 2024-09-07 |  |  |
| 33 | 4.1 | **生态围隔布设工程** | 20d | 2024-05-01 | 2024-05-20 |  |  |
| 34 | 4.1.1 | 不透水围隔 | 20d | 2024-05-01 | 2024-05-20 |  |  |
| 35 | 4.1.2 | 拦鱼网 | 20d | 2024-05-01 | 2024-05-20 |  |  |
| 36 | 4.2 | **鱼类种群调控工程** | 110d | 2024-05-21 | 2024-09-07 |  |  |
| 37 | 4.2.1 | 清除鱼类 | 10d | 2024-05-21 | 2024-05-30 | 34, 35 | waiting |
| 38 | 4.2.2 | 鱼类投放 | 10d | 2024-08-29 | 2024-09-07 | 40 | waiting |
| 39 | 4.3 | **水生植物恢复工程** | 90d | 2024-05-31 | 2024-08-28 |  |  |
| 40 | 4.3.1 | 沉水植物种植及补种 | 90d | 2024-05-31 | 2024-08-28 | 37 | waiting |
| 41 | 5 | **四、水生态监管能力建设** | 366d | 2024-01-01 | 2024-12-31 |  |  |
| 42 | 5.1 | 跟踪监测评估 | 366d | 2024-01-01 | 2024-12-31 |  |  |
| 43 | 5.2 | 测藻仪采购及安装 | 275d | 2024-04-01 | 2024-12-31 |  |  |
| 44 | 5.3 | 水生态管理能力建设报告编制 | 275d | 2024-04-01 | 2024-12-31 |  |  |
